# Gantt Sistema de Venta Pullman

Schedule from MS Project, 2010-04-01 to 2010-08-23.
GPM

## Calendars

- Estándar: Mon-Fri 09:00-14:00, 15:00-18:00; Sat-Sun off.

## Resources

| Resource | Group |
| --- | --- |
| José Luis Larios | Sistemas |
| Luis Salez | Sistemas |
| Gilberto Almanza | Sistemas |
| José Luis del Río | Sistemas |
| Uriel Muñoz | Sistemas |
| Ricardo González | Operaciones |
| Reyes González | Operaciones |
| Samuel García | Sistemas |
| Fatima Alvarez | Mercadotecnia |
| Columba Gómez | Ingresos y Egresos |
| Macario Acosta | Sistemas |
| Juan Correa | Sistemas |
| Luis Saavedra | Sistemas |
| Oscar Parrilla | Sistemas |

## Schedule

| ID | WBS | Task | Duration | Start | Finish | Predecessors | Total slack | Constraint | Resources | Work |
| --- | --- | --- | --- | --- | --- | --- | --- | --- | --- | --- |
| 1 | 1 | **Proyecto Sistema de Venta Pullman** | 103d | 2010-04-01 09:00 | 2010-08-23 18:00 |  | 0d |  |  | 5679h |
| 2 | 1.1 | **Instalación de Servidores con Sistema Operativo Linux y Base de datos MySQL** | 8d | 2010-04-01 09:00 | 2010-04-12 18:00 |  | 0d |  |  | 128h |
| 3 | 1.1.1 | Servidor Central | 1d | 2010-04-01 09:00 | 2010-04-01 18:00 |  | 0d |  | José Luis Larios; Luis Saavedra | 16h |
| 4 | 1.1.2 | Servidor TCS | 1d | 2010-04-02 09:00 | 2010-04-02 18:00 | 3 | 0d | start no earlier than 2010-04-02 09:00 | José Luis Larios; Luis Saavedra | 16h |
| 5 | 1.1.3 | Servidor CUE | 1d | 2010-04-05 09:00 | 2010-04-05 18:00 | 4 | 0d |  | José Luis Larios; Luis Saavedra | 16h |
| 6 | 1.1.4 | Servidor CCS | 1d | 2010-04-06 09:00 | 2010-04-06 18:00 | 5 | 0d | start no earlier than 2010-04-05 09:00 | José Luis Larios; Luis Saavedra | 16h |
| 7 | 1.1.5 | Servidor JOJ | 1d | 2010-04-07 09:00 | 2010-04-07 18:00 | 6 | 0d | start no earlier than 2010-04-05 09:00 | José Luis Larios; Luis Saavedra | 16h |
| 8 | 1.1.6 | Servidor PTE | 1d | 2010-04-08 09:00 | 2010-04-08 18:00 | 7 | 0d |  | José Luis Larios; Luis Saavedra | 16h |
| 9 | 1.1.7 | Servidor AER | 1d | 2010-04-09 09:00 | 2010-04-09 18:00 | 8 | 0d |  | José Luis Larios; Luis Saavedra | 16h |
| 10 | 1.1.8 | Servidor ZAC | 1d | 2010-04-12 09:00 | 2010-04-12 18:00 | 9 | 0d |  | José Luis Larios; Luis Saavedra | 16h |
| 11 | 1.2 | **Carga de Catálogos y datos parciales reales para correr los Escenarios de Pruebas Integrales** | 8d | 2010-04-13 09:00 | 2010-04-22 18:00 |  | 0d |  |  | 128h |
| 12 | 1.2.1 | Servidor Central | 1d | 2010-04-13 09:00 | 2010-04-13 18:00 | 10 | 0d | start no earlier than 2010-04-12 09:00 | José Luis Larios; Luis Saavedra | 16h |
| 13 | 1.2.2 | Servidor TCS | 1d | 2010-04-14 09:00 | 2010-04-14 18:00 | 12 | 0d |  | José Luis Larios; Luis Saavedra | 16h |
| 14 | 1.2.3 | Servidor CUE | 1d | 2010-04-15 09:00 | 2010-04-15 18:00 | 13 | 0d | start no earlier than 2010-04-14 09:00 | José Luis Larios; Luis Saavedra | 16h |
| 15 | 1.2.4 | Servidor CCS | 1d | 2010-04-16 09:00 | 2010-04-16 18:00 | 14 | 0d |  | José Luis Larios; Luis Saavedra | 16h |
| 16 | 1.2.5 | Servidor JOJ | 1d | 2010-04-19 09:00 | 2010-04-19 18:00 | 15 | 0d | start no earlier than 2010-04-16 09:00 | José Luis Larios; Luis Saavedra | 16h |
| 17 | 1.2.6 | Servidor PTE | 1d | 2010-04-20 09:00 | 2010-04-20 18:00 | 16 | 0d |  | José Luis Larios; Luis Saavedra | 16h |
| 18 | 1.2.7 | Servidor AER | 1d | 2010-04-21 09:00 | 2010-04-21 18:00 | 17 | 0d | start no earlier than 2010-04-20 09:00 | José Luis Larios; Luis Saavedra | 16h |
| 19 | 1.2.8 | Servidor ZAC | 1d | 2010-04-22 09:00 | 2010-04-22 18:00 | 18 | 0d |  | José Luis Larios; Luis Saavedra | 16h |
| 20 | 1.3 | **Pruebas Integrales (Con Datos Parciales)** | 40d | 2010-04-23 09:00 | 2010-06-17 18:00 |  | 0d |  |  | 1279h |
| 21 | 1.3.1 | Ajustes de Parametros Generales del Sistema (Oficina) | 3h | 2010-04-23 09:00 | 2010-04-23 12:00 | 19 | 0d |  | José Luis Larios; Luis Salez; Gilberto Almanza; Oscar Parrilla | 12h |
| 22 | 1.3.2 | Creación de Rutas y Tramos | 3h | 2010-04-23 12:00 | 2010-04-23 16:00 | 21 | 0d |  | José Luis del Río; Luis Salez; Gilberto Almanza; Samuel García; Oscar Parrilla | 15h |
| 23 | 1.3.3 | Administración de Tramos | 3h | 2010-04-23 16:00 | 2010-04-26 10:00 | 22 | 0d |  | Gilberto Almanza; José Luis del Río; Oscar Parrilla | 9h |
| 24 | 1.3.4 | Alta de Tarifas | 3h | 2010-04-26 10:00 | 2010-04-26 13:00 | 23 | 0d |  | José Luis Larios; Luis Salez; Gilberto Almanza; Oscar Parrilla | 12h |
| 25 | 1.3.5 | Modificación de Tarifas | 3h | 2010-04-26 13:00 | 2010-04-26 17:00 | 24 | 0d |  | Gilberto Almanza; Oscar Parrilla | 6h |
| 26 | 1.3.6 | Consulta de Tarifas | 1h | 2010-04-26 17:00 | 2010-04-26 18:00 | 25 | 0d |  | Gilberto Almanza; Oscar Parrilla | 2h |
| 27 | 1.3.7 | Creación de Itinerario | 8h | 2010-04-27 09:00 | 2010-04-27 18:00 | 26 | 0d |  | José Luis Larios; Luis Salez; Gilberto Almanza; Oscar Parrilla | 32h |

| ID | WBS | Task | Duration | Start | Finish | Predecessors | Total slack | Resources | Work |
| --- | --- | --- | --- | --- | --- | --- | --- | --- | --- |
| 28 | 1.3.8 | **Corridas** | 1d | 2010-04-28 09:00 | 2010-04-28 18:00 |  | 0d |  | 24h |
| 29 | 1.3.8.1 | Creación Por rangos de Fecha | 2h | 2010-04-28 09:00 | 2010-04-28 11:00 | 27 | 0d | José Luis Larios; Gilberto Almanza; Oscar Parrilla | 6h |
| 30 | 1.3.8.2 | Creación Por Ciudad de Venta | 2h | 2010-04-28 11:00 | 2010-04-28 13:00 | 29 | 0d | José Luis Larios; Gilberto Almanza; Oscar Parrilla | 6h |
| 31 | 1.3.8.3 | Cierre y Cancelación de Corridas | 4h | 2010-04-28 13:00 | 2010-04-28 18:00 | 30 | 0d | José Luis Larios; Gilberto Almanza; Oscar Parrilla | 12h |
| 32 | 1.3.9 | Alta de Tipos de Pago | 1.5h | 2010-04-29 09:00 | 2010-04-29 10:30 | 31 | 0d | José Luis Larios; Luis Salez; Gilberto Almanza; Oscar Parrilla | 6h |
| 33 | 1.3.10 | Alta de Tipos de Pasajero | 1.5h | 2010-04-29 10:30 | 2010-04-29 12:00 | 32 | 0d | José Luis Larios; Luis Salez; Gilberto Almanza; Oscar Parrilla | 6h |
| 34 | 1.3.11 | Generación de Permisos de Grupos | 2h | 2010-04-29 12:00 | 2010-04-29 14:00 | 33 | 0d | José Luis Larios; Luis Salez; Gilberto Almanza; Oscar Parrilla | 8h |
| 35 | 1.3.12 | Generación de Permisos de Usuarios | 2h | 2010-04-29 15:00 | 2010-04-29 17:00 | 34 | 0d | José Luis Larios; Luis Salez; Gilberto Almanza; Oscar Parrilla | 8h |
| 36 | 1.3.13 | Impresión de Carga Inicial | 1h | 2010-04-29 17:00 | 2010-04-29 18:00 | 35 | 0d | José Luis Larios; Oscar Parrilla; Gilberto Almanza | 3h |
| 37 | 1.3.14 | Venta | 1d | 2010-04-30 09:00 | 2010-04-30 18:00 | 36 | 0d | José Luis Larios; Gilberto Almanza; Luis Salez; Oscar Parrilla | 32h |
| 38 | 1.3.15 | Cancelación de Venta | 1d | 2010-05-03 09:00 | 2010-05-03 18:00 | 37 | 0d | José Luis Larios; Luis Salez; Gilberto Almanza; Oscar Parrilla | 32h |
| 39 | 1.3.16 | **Reservaciones** | 1.5d | 2010-05-04 09:00 | 2010-05-05 13:00 |  | 0d |  | 48h |
| 40 | 1.3.16.1 | Apartar Asiento | 0.5d | 2010-05-04 09:00 | 2010-05-04 13:00 | 38 | 0d | Gilberto Almanza; José Luis Larios; Luis Salez; Oscar Parrilla | 16h |
| 41 | 1.3.16.2 | Venta de Reservados | 0.5d | 2010-05-04 13:00 | 2010-05-04 18:00 | 40 | 0d | Gilberto Almanza; José Luis Larios; Luis Salez; Oscar Parrilla | 16h |
| 42 | 1.3.16.3 | Cancelación de Reservaciones | 0.5d | 2010-05-05 09:00 | 2010-05-05 13:00 | 41 | 0d | Gilberto Almanza; José Luis Larios; Luis Salez; Oscar Parrilla | 16h |
| 43 | 1.3.17 | Venta Anticipada | 1d | 2010-05-05 13:00 | 2010-05-06 13:00 | 42 | 0d | Gilberto Almanza; José Luis Larios; Luis Salez; Oscar Parrilla | 32h |
| 44 | 1.3.18 | Cancelación de Venta Anticipada | 0.5d | 2010-05-06 13:00 | 2010-05-06 18:00 | 43 | 0d | Gilberto Almanza; José Luis Larios; Luis Salez; Oscar Parrilla | 16h |
| 45 | 1.3.19 | Venta de boleto Abierto | 1d | 2010-05-07 09:00 | 2010-05-07 18:00 | 44 | 0d | José Luis Larios; Oscar Parrilla | 16h |
| 46 | 1.3.20 | Cancelación de Boleto Abierto | 0.5d | 2010-05-10 09:00 | 2010-05-10 13:00 | 45 | 0d | José Luis Larios; Oscar Parrilla | 8h |
| 47 | 1.3.21 | Canje de Boleto Abierto con boleto que contenga número de asiento, corrida, fecha y hora | 0.5d | 2010-05-10 13:00 | 2010-05-10 18:00 | 46 | 0d | José Luis Larios; Oscar Parrilla | 8h |
| 48 | 1.3.22 | Impresión de Guías de Viaje | 1d | 2010-05-11 09:00 | 2010-05-11 18:00 | 47 | 0d | José Luis Larios; Gilberto Almanza; Oscar Parrilla | 24h |
| 49 | 1.3.23 | Cortes Por Promotor de venta | 3h | 2010-05-12 09:00 | 2010-05-12 12:00 | 48 | 0d | José Luis Larios; Luis Salez; Gilberto Almanza; Oscar Parrilla | 12h |
| 50 | 1.3.24 | Cortes por Fin de Turno | 3h | 2010-05-12 12:00 | 2010-05-12 16:00 | 49 | 0d | José Luis Larios; Gilberto Almanza; Luis Salez; Oscar Parrilla | 12h |
| 51 | 1.3.25 | Cortes por Tipo de Servicio | 3h | 2010-05-12 16:00 | 2010-05-13 10:00 | 50 | 0d | Gilberto Almanza; José Luis Larios; Luis Salez; Oscar Parrilla | 12h |
| 52 | 1.3.26 | Recolección Parcial | 3h | 2010-05-13 10:00 | 2010-05-13 13:00 | 51 | 0d | Gilberto Almanza; José Luis Larios; Luis Salez; Oscar Parrilla | 12h |
| 53 | 1.3.27 | Reporte de Faltantes y Sobrantes | 4h | 2010-05-13 13:00 | 2010-05-13 18:00 | 52 | 0d | Gilberto Almanza; José Luis Larios; Luis Salez; Oscar Parrilla | 16h |
| 54 | 1.3.28 | Depuración del Sistema | 1d | 2010-05-14 09:00 | 2010-05-14 18:00 | 53 | 0d | Gilberto Almanza; José Luis Larios; Luis Salez; Oscar Parrilla | 32h |
| 55 | 1.3.29 | Distribución automática de Veus para alta de promotores de venta en todas las ciudades | 1d | 2010-05-17 09:00 | 2010-05-17 18:00 | 54 | 0d | Gilberto Almanza; José Luis Larios; Luis Salez; Oscar Parrilla; Samuel García | 40h |
| 56 | 1.3.30 | Generación de una sola corrida en un rango de fechas | 2d | 2010-05-18 09:00 | 2010-05-19 18:00 | 55 | 0d | Gilberto Almanza; José Luis Larios; Oscar Parrilla | 48h |
| 57 | 1.3.31 | Generación de Corridas Extras | 2d | 2010-05-20 09:00 | 2010-05-21 18:00 | 56 | 0d | Gilberto Almanza; José Luis Larios; Oscar Parrilla | 48h |
| 58 | 1.3.32 | Agrupación de Corridas | 2d | 2010-05-24 09:00 | 2010-05-25 18:00 | 57 | 0d | Gilberto Almanza; José Luis Larios; Oscar Parrilla; Luis Salez | 64h |
| 59 | 1.3.33 | Venta de Viaje Redondo | 7d | 2010-05-26 09:00 | 2010-06-03 18:00 | 58 | 0d | Gilberto Almanza; José Luis Larios; Luis Salez; Oscar Parrilla | 224h |
| 60 | 1.3.34 | Intregración de Información al Sistema Poseidón Alterno | 5d | 2010-06-04 09:00 | 2010-06-10 18:00 | 59 | 0d | Gilberto Almanza; José Luis Larios; Luis Salez; Oscar Parrilla; Samuel García | 200h |
| 61 | 1.3.35 | Comparativo de Informacion Integrada Sistema Poseidon Actual Sistema Poseidón Alterno | 5d | 2010-06-11 09:00 | 2010-06-17 18:00 | 60 | 0d | Gilberto Almanza; José Luis Larios; Luis Salez; Oscar Parrilla; Samuel García | 200h |
| 62 | 1.4 | Ajustes Por detección de Pruebas Erroneas | 5d | 2010-06-18 09:00 | 2010-06-24 18:00 | 61 | 0d | Gilberto Almanza; José Luis Larios; Luis Salez; Oscar Parrilla; Samuel García | 200h |

| ID | WBS | Task | Duration | Start | Finish | Predecessors | Total slack | Free slack | Resources | Work |
| --- | --- | --- | --- | --- | --- | --- | --- | --- | --- | --- |
| 63 | 1.5 | **Pruebas de Performance (Velocidad) del sistema con Promotores de venta Experimentados** | 2d | 2010-06-25 09:00 | 2010-06-28 18:00 |  | 0d |  |  | 112h |
| 64 | 1.5.1 | Venta y Cancelación de venta | 1d | 2010-06-25 09:00 | 2010-06-25 18:00 | 62 | 0d |  | Gilberto Almanza; José Luis Larios; Luis Salez; Oscar Parrilla; Samuel García; Reyes González; Ricardo González | 56h |
| 65 | 1.5.2 | Reservaciones y Cancelación de Reservaciones | 0.5d | 2010-06-28 09:00 | 2010-06-28 13:00 | 64 | 0d |  | Gilberto Almanza; José Luis Larios; Luis Salez; Oscar Parrilla; Reyes González; Ricardo González; Samuel García | 28h |
| 66 | 1.5.3 | Venta Anticipada y cancelación de Venta Anticipada | 0.5d | 2010-06-28 13:00 | 2010-06-28 18:00 | 65 | 0d |  | Gilberto Almanza; José Luis Larios; Luis Salez; Oscar Parrilla; Reyes González; Ricardo González; Samuel García | 28h |
| 67 | 1.6 | **Implementación** | 66.12d | 2010-04-29 17:00 | 2010-07-30 18:00 |  | 16d |  |  | 3192h |
| 68 | 1.6.1 | **Validación de Catálogos Finales** | 30d | 2010-04-29 17:00 | 2010-06-10 17:00 |  | 52.12d |  |  | 1872h |
| 69 | 1.6.1.1 | Ciudades | 1d | 2010-04-29 17:00 | 2010-04-30 17:00 | 35 | 52.12d | 0d | Gilberto Almanza; José Luis Larios; Luis Salez; Oscar Parrilla; Reyes González; Ricardo González; Samuel García; Fatima Alvarez | 64h |
| 70 | 1.6.1.2 | Rutas y Tramos | 5d | 2010-04-30 17:00 | 2010-05-07 17:00 | 69 | 52.12d | 0d | Fatima Alvarez; Gilberto Almanza; José Luis Larios; Luis Salez; Oscar Parrilla; Reyes González; Ricardo González; Samuel García | 320h |
| 71 | 1.6.1.3 | Tarifas | 5d | 2010-05-07 17:00 | 2010-05-14 17:00 | 70 | 52.12d | 0d | Fatima Alvarez; Gilberto Almanza; José Luis Larios; Luis Salez; Oscar Parrilla; Reyes González; Ricardo González; Samuel García; Columba Gómez | 360h |
| 72 | 1.6.1.4 | Autobuses | 1d | 2010-05-14 17:00 | 2010-05-17 17:00 | 71 | 52.12d | 0d | Gilberto Almanza; José Luis Larios; Luis Salez; Oscar Parrilla; Samuel García | 40h |
| 73 | 1.6.1.5 | Usuarios del Sistema y Perfiles de usuarios | 1d | 2010-05-17 17:00 | 2010-05-18 17:00 | 72 | 52.12d | 0d | Oscar Parrilla; Luis Salez; José Luis Larios; Gilberto Almanza | 32h |
| 74 | 1.6.1.6 | Generación de Itinerario General | 15d | 2010-05-18 17:00 | 2010-06-08 17:00 | 73 | 52.12d | 0d | Gilberto Almanza; José Luis Larios; Luis Salez; Oscar Parrilla; Reyes González; Ricardo González; Samuel García; Fatima Alvarez | 960h |
| 75 | 1.6.1.7 | Generación de Corridas | 2d | 2010-06-08 17:00 | 2010-06-10 17:00 | 74 | 52.12d |  | Gilberto Almanza; José Luis Larios; Luis Salez; Oscar Parrilla; Reyes González; Ricardo González | 96h |
| 76 | 1.6.2 | Reubicación de Servidores de Venta en En Terminal de Venta e instalación de Clientes en Taquillas | 5d | 2010-06-29 09:00 | 2010-07-05 18:00 | 66 | 0d |  | José Luis del Río; Juan Correa; Luis Saavedra; José Luis Larios; Macario Acosta; Oscar Parrilla; Uriel Muñoz | 280h |
| 77 | 1.6.3 | **Pruebas en Paralelo** | 14d | 2010-07-06 09:00 | 2010-07-23 18:00 |  | 0d |  |  | 840h |
| 78 | 1.6.3.1 | Pruebas de Venta | 7d | 2010-07-06 09:00 | 2010-07-14 18:00 | 76 | 0d |  | Samuel García; Ricardo González; Reyes González; Oscar Parrilla; Luis Salez; José Luis Larios; Gilberto Almanza; José Luis del Río; Juan Correa; Macario Acosta | 560h |
| 79 | 1.6.3.2 | Comparativos de Información resultante Sistema Camión vs. Sistema Pullman | 2d | 2010-07-15 09:00 | 2010-07-16 18:00 | 78 | 0d |  | Gilberto Almanza; José Luis Larios; Luis Salez; Oscar Parrilla; Samuel García | 80h |
| 80 | 1.6.3.3 | Comparativos de Información Integrada Sistema Poseidón Actual, Sistema Poseidón Nuevo | 5d | 2010-07-19 09:00 | 2010-07-23 18:00 | 79 | 0d |  | Gilberto Almanza; José Luis Larios; Luis Salez; Oscar Parrilla; Samuel García | 200h |
| 81 | 1.6.4 | Ajustes Por Detección de Pruebas Erroneas | 5d | 2010-07-26 09:00 | 2010-07-30 18:00 | 80 | 0d |  | Gilberto Almanza; José Luis Larios; Luis Salez; Oscar Parrilla; Samuel García | 200h |
| 82 | 1.7 | Puesta en productivo del Sistema de venta Pullman | 1d | 2010-08-02 09:00 | 2010-08-02 18:00 | 81 | 0d |  | Gilberto Almanza; José Luis Larios; Luis Salez; Oscar Parrilla; Samuel García | 40h |
| 83 | 1.8 | Monitoreo del Sistema | 14d | 2010-08-03 09:00 | 2010-08-20 18:00 | 82 | 0d |  | Gilberto Almanza; José Luis Larios; Luis Salez; Oscar Parrilla; Samuel García | 560h |
| 84 | 1.9 | Liberación del Sistema | 1d | 2010-08-23 09:00 | 2010-08-23 18:00 | 83 | 0d |  | Gilberto Almanza; José Luis Larios; Luis Salez; Oscar Parrilla; Samuel García | 40h |
